# T04_Project_Plan2

Schedule from MS Project, 2014-10-01 to 2014-12-11, status date 2014-12-12, A marks actual dates.

## Calendars

- Standard: Mon-Fri 08:00-12:00, 13:00-17:00; Sat-Sun off. Exceptions (off unless hours are given): 2014-10-25 08:00-12:00, 13:00-17:00, 2014-11-15 to 2014-11-16 08:00-12:00, 13:00-17:00.

## Resources

| Resource |
| --- |
| Rusty |
| Dan |
| Noah |
| Branden |

## Schedule

| ID | WBS | Task | Type | Duration | Start | Finish | Predecessors | Complete | Remaining | Total slack | Free slack | Constraint | Resources | Work | Actual work |
| --- | --- | --- | --- | --- | --- | --- | --- | --- | --- | --- | --- | --- | --- | --- | --- |
| 1 | 1 | Project Start | milestone | 0d | 2014-10-01 | 2014-10-01 |  |  |  | 54d |  |  |  |  |  |
| 2 | 2 | Form Group |  | 1d | 2014-10-01 A | 2014-10-01 A | 1 | 100% |  |  |  |  |  |  |  |
| 3 | 3 | **Choose Project** |  | 2d | 2014-10-01 A | 2014-10-03 A |  | 100% |  |  |  |  |  | 164h | 164h |
| 4 | 3.1 | Generate Project Ideas |  | 5d | 2014-10-01 A | 2014-10-03 A | 2 | 100% |  |  |  |  | Branden; Dan [50%]; Noah [50%]; Rusty | 120h | 120h |
| 5 | 3.2 | Determine Pros/Cons of all ideas generated. |  | 2d | 2014-10-01 A | 2014-10-02 A | 4 | 100% |  |  |  |  | Branden; Dan [25%]; Noah [50%]; Rusty | 28h | 28h |
| 6 | 3.3 | Complete Decision Matrix. |  | 4d | 2014-10-02 A | 2014-10-03 A | 5 | 100% |  |  |  |  | Dan [25%]; Rusty | 16h | 16h |
| 7 | 3.4 | Decide on project | milestone | 0d | 2014-10-03 A | 2014-10-03 A | 6 | 100% |  |  |  |  | Branden; Dan; Noah; Rusty |  |  |
| 8 | 4 | Order Sensors | milestone | 0d | 2014-10-13 A | 2014-10-13 A |  | 100% |  |  |  | start no earlier than 2014-10-13 | Dan |  |  |
| 9 | 5 | Decide on basic project specifications |  | 1d | 2014-10-03 A | 2014-10-03 A | 7 | 100% |  |  |  |  | Branden; Dan; Noah; Rusty | 32h | 32h |
| 10 | 6 | **Project Management** |  | 41d | 2014-10-01 A | 2014-11-24 |  | 51% | 20.13d | 13d |  |  |  | 417h | 136h |
| 11 | 6.1 | Create Repository and add all users |  | 1d | 2014-10-01 A | 2014-10-01 A |  | 100% |  |  |  |  | Dan [50%] | 8h | 8h |
| 12 | 6.2 | Design basic wiki layout to meet assigned requirements |  | 1d | 2014-10-01 A | 2014-10-01 A |  | 100% |  |  |  |  | Noah [50%] | 8h | 8h |
| 13 | 6.3 | Write project proposal |  | 5d | 2014-10-03 A | 2014-10-05 A | 9 | 100% |  |  |  |  | Rusty | 40h | 40h |
| 14 | 6.4 | Project proposal due | milestone | 0d | 2014-10-13 A | 2014-10-13 A |  | 100% |  |  |  |  |  |  |  |
| 15 | 6.5 | Proposal approved by instructor | milestone | 0d | 2014-10-13 A | 2014-10-13 A | 13 | 100% |  |  |  |  |  |  |  |
| 16 | 6.6 | Write design specifications |  | 5d | 2014-10-20 A | 2014-10-22 A | 15 | 100% |  |  |  | start no earlier than 2014-10-20 | Rusty | 40h | 40h |
| 17 | 6.7 | Review design specifications |  | 1d | 2014-10-25 A | 2014-10-25 A | 16 | 100% |  |  |  | start no earlier than 2014-10-25 | Branden; Dan; Noah; Rusty | 32h | 32h |
| 18 | 6.8 | Design specifications due | milestone | 0d | 2014-10-27 A | 2014-10-27 A | 17 | 100% |  |  |  |  |  |  |  |
| 19 | 6.9 | Complete task schedule |  | 1d | 2014-11-08 A | 2014-11-08 A |  | 100% |  |  |  | finish no earlier than 2014-11-08 | Rusty | 8h | 8h |
| 20 | 6.10 | Review task schedule |  | 1d | 2014-11-08 | 2014-11-09 | 19 |  |  | 25d |  |  | Branden; Dan; Noah; Rusty | 32h |  |
| 21 | 6.11 | Task schedule due | milestone, manual | 0d | 2014-11-10 | 2014-11-10 |  |  |  |  |  |  |  |  |  |
| 22 | 6.12 | Schedule Final Presentation | milestone, manual | 0d | 2014-11-10 | 2014-11-10 |  |  |  |  |  |  | Rusty |  |  |
| 23 | 6.13 | Create system design block models | manual | 5d | 2014-11-10 | 2014-11-14 |  |  |  |  |  |  | Rusty | 105h |  |
| 24 | 6.14 | Review of block models |  | 2d | 2014-11-16 | 2014-11-16 | 23 |  |  | 18d | 0d | finish no earlier than 2014-11-16 | Branden; Dan; Noah; Rusty | 64h |  |
| 25 | 6.15 | System design block models due | milestone | 0d | 2014-11-16 | 2014-11-16 | 24 |  |  | 18d |  |  |  |  |  |
| 26 | 6.16 | Create initial test plan |  | 2d | 2014-11-05 | 2014-11-05 | 33 |  |  | 25d | 0d |  | Rusty | 16h |  |
| 27 | 6.17 | Finalize test plan based on lecture |  | 3.5d | 2014-11-05 | 2014-11-08 | 26 |  |  | 25d |  |  | Branden; Dan; Noah | 64h |  |
| 28 | 6.18 | Test Plan Due | milestone | 0d | 2014-11-24 | 2014-11-24 |  |  |  | 7.38d | 0d | start no earlier than 2014-11-24 |  |  |  |

| ID | WBS | Task | Type | Duration | Start | Finish | Predecessors | Complete | Resources | Work | Actual work |
| --- | --- | --- | --- | --- | --- | --- | --- | --- | --- | --- | --- |
| 29 | 7 | **Research project** |  | 1d | 2014-10-13 A | 2014-10-14 A | 15 | 100% |  | 112h | 112h |
| 30 | 7.1 | Determine sensor type and source |  | 2d | 2014-10-13 A | 2014-10-14 A |  | 100% | Dan; Rusty | 32h | 32h |
| 31 | 7.2 | Research interfacing with Atmel processor |  | 3d | 2014-10-13 A | 2014-10-14 A |  | 100% | Noah; Branden | 48h | 48h |
| 32 | 7.3 | Decide on display type |  | 1d | 2014-10-13 A | 2014-10-13 A |  | 100% | Branden; Dan; Noah; Rusty | 32h | 32h |
| 33 | 8 | **Design Circuit** |  | 14d | 2014-10-17 A | 2014-11-05 A | 18 | 100% |  | 186h | 186h |
| 34 | 8.1 | Design display board |  | 1d | 2014-10-27 A | 2014-10-27 A | 39 | 100% | Dan | 8h | 8h |
| 35 | 8.2 | Design main board |  | 1d | 2014-10-27 A | 2014-10-27 A | 15 | 100% | Noah | 8h | 8h |
| 36 | 8.3 | Revise |  | 2d | 2014-10-27 A | 2014-10-28 A | 34, 35 | 100% | Branden [50%]; Rusty [50%] | 16h | 16h |
| 37 | 8.4 | Decide on packages and source parts |  | 1d | 2014-10-28 A | 2014-10-28 A | 36 | 100% | Rusty | 8h | 8h |
| 38 | 8.5 | Order parts for prototype | milestone | 0d | 2014-10-27 A | 2014-10-27 A | 15 | 100% | Rusty |  |  |
| 39 | 8.6 | Draw display schematics |  | 0.88d | 2014-10-17 A | 2014-10-17 A | 32 | 100% | Dan | 8h | 8h |
| 40 | 8.7 | Draw main board schematics |  | 1d | 2014-10-27 A | 2014-10-28 A | 35 | 100% | Noah | 8h | 8h |
| 41 | 8.8 | Preliminary schematics due | milestone | 0d | 2014-10-29 A | 2014-10-29 A |  | 100% |  |  |  |
| 42 | 8.9 | Receive schematics feedback from instructor | milestone | 0d | 2014-11-03 A | 2014-11-03 A |  | 100% |  |  |  |
| 43 | 8.10 | Revise schematics based on instructor feedback |  | 5d | 2014-11-03 A | 2014-11-05 A | 42 | 100% | Branden [25%]; Dan; Noah; Rusty | 130h | 130h |
| 44 | 9 | **Configure Embedded Interface** |  | 1d | 2014-10-14 A | 2014-10-15 A | 29 | 100% |  | 32h | 32h |
| 45 | 9.1 | "Hello World" Arduino |  | 1d | 2014-10-14 A | 2014-10-14 A |  | 100% | Noah | 8h | 8h |
| 46 | 9.2 | Bootload microcontroller on breadboard |  | 1d | 2014-10-14 A | 2014-10-14 A |  | 100% | Rusty | 8h | 8h |
| 47 | 9.3 | Upload Arduino sketches on breadboard |  | 0.5d | 2014-10-14 A | 2014-10-14 A | 46 | 100% | Rusty | 4h | 4h |
| 48 | 9.4 | Write sensor input algorithm |  | 0.5d | 2014-10-14 A | 2014-10-14 A | 45 | 100% | Noah | 4h | 4h |
| 49 | 9.5 | Write algorithm to process input and output to display |  | 1d | 2014-10-14 A | 2014-10-15 A | 48 | 100% | Noah | 8h | 8h |
| 50 | 9.6 | Code complete | milestone | 0d | 2014-10-14 A | 2014-10-14 A |  | 100% |  |  |  |
| 51 | 10 | **Prototype and Testing** |  | 17.5d | 2014-10-16 A | 2014-11-09 A |  | 100% |  | 96h | 96h |
| 52 | 10.1 | Breadboard display and test using all valid inputs |  | 1d | 2014-11-05 A | 2014-11-05 A | 38, 33, 44 | 100% | Dan | 8h | 8h |
| 53 | 10.2 | Test controlling individual display lights using Atmel processor |  | 4d | 2014-11-05 A | 2014-11-07 A | 52 | 100% | Branden [25%]; Noah [50%] | 16h | 16h |
| 54 | 10.3 | Test individual sensors for range. |  | 1d | 2014-11-05 A | 2014-11-05 A | 8 | 100% | Branden; Rusty | 16h | 16h |

| ID | WBS | Task | Type | Duration | Start | Finish | Predecessors | Complete | Remaining | Total slack | Free slack | Constraint | Resources | Work | Actual work |
| --- | --- | --- | --- | --- | --- | --- | --- | --- | --- | --- | --- | --- | --- | --- | --- |
| 55 | 10.4 | **Debug Code and Board to Board Connections** |  | 17.5d | 2014-10-16 A | 2014-11-09 A |  | 100% |  |  |  |  |  | 56h | 56h |
| 56 | 10.4.1 | Multiple Sensor Debugging |  | 3d | 2014-10-16 A | 2014-10-17 A | 50 | 100% |  |  |  |  | Noah [50%] | 12h | 12h |
| 57 | 10.4.2 | Display Timing and Pattern Debugging |  | 3d | 2014-11-05 A | 2014-11-06 A | 50, 33, 44 | 100% |  |  |  |  | Noah | 12h | 12h |
| 58 | 10.4.3 | Always On LED Revision Debugging and Testing |  | 3d | 2014-11-07 A | 2014-11-08 A | 57 | 100% |  |  |  |  | Noah | 16h | 16h |
| 59 | 10.4.4 | Display Enable Revision Debugging and Testing |  | 4d | 2014-11-08 A | 2014-11-09 A | 58, 33, 44 | 100% |  |  |  |  | Noah | 16h | 16h |
| 60 | 10.5 | Order parts for final build | milestone | 0d | 2014-11-07 A | 2014-11-07 A | 53 | 100% |  |  |  |  | Dan |  |  |
| 61 | 11 | **Create PCB Layouts** |  | 3.38d | 2014-11-05 A | 2014-11-10 |  | 99% | 0d | 16.62d |  |  |  | 32h | 32h |
| 62 | 11.1 | Create mainboard layout |  | 1d | 2014-11-05 A | 2014-11-05 A | 43 | 100% |  |  |  |  | Noah | 8h | 8h |
| 63 | 11.2 | Create display board layout |  | 1d | 2014-11-05 A | 2014-11-05 A | 43 | 100% |  |  |  |  | Branden | 8h | 8h |
| 64 | 11.3 | DRC check both layouts |  | 1d | 2014-11-05 A | 2014-11-06 A | 62 | 100% |  |  |  |  | Rusty | 8h | 8h |
| 65 | 11.4 | Preliminary board layouts due | milestone | 0d | 2014-11-05 A | 2014-11-05 A |  | 100% |  |  |  | start no earlier than 2014-11-05 |  |  |  |
| 66 | 11.5 | Receive instructor feedback on layouts | milestone | 0d | 2014-11-07 A | 2014-11-07 A |  | 100% |  |  |  |  |  |  |  |
| 67 | 11.6 | Revise boards with instructor feedback |  | 1d | 2014-11-07 A | 2014-11-07 A | 66 | 100% |  |  |  |  | Dan | 8h | 8h |
| 68 | 11.7 | Fit parts to printed board layout |  | 0.5d | 2014-11-07 A | 2014-11-10 A | 67 | 100% |  |  |  |  |  |  |  |
| 69 | 11.8 | Submit final layouts to Osh Park | milestone | 0d | 2014-11-07 | 2014-11-07 | 67 |  |  | 25d | 0d |  |  |  |  |
| 70 | 12 | **Source or design enclosures** |  | 0.12d | 2014-11-07 | 2014-11-08 | 69 |  |  | 25d |  |  |  | 16h |  |
| 71 | 12.1 | Build enclosures (if not sourced) |  | 2d | 2014-11-07 | 2014-11-08 |  |  |  | 25d |  |  | Rusty | 16h |  |
| 72 | 13 | **Assemble finished product** |  | 4.88d | 2014-11-17 | 2014-11-21 |  |  |  | 8.12d | 0d |  |  | 64h |  |
| 73 | 13.1 | Receive boards from Osh Park | milestone | 0d | 2014-11-17 | 2014-11-17 | 69 |  |  | 13d | 0d | start no earlier than 2014-11-17 |  |  |  |
| 74 | 13.2 | Populate PCB's |  | 4d | 2014-11-17 | 2014-11-18 | 73 |  |  | 13d | 0d |  | Branden; Dan; Noah; Rusty | 64h |  |
| 75 | 13.3 | Populate enclosures |  | 3d | 2014-11-18 | 2014-11-21 | 74 |  |  | 8.12d |  |  |  |  |  |
| 76 | 14 | **Final Testing** |  | 1.12d | 2014-11-21 | 2014-11-25 | 72 |  |  | 8.12d |  |  |  | 136h |  |
| 77 | 14.1 | Debug Hardware |  | 2.5d | 2014-11-21 | 2014-11-22 | 74 |  |  | 9.12d | 0d |  | Dan; Rusty | 40h |  |
| 78 | 14.2 | Debug Software |  | 5d | 2014-11-21 | 2014-11-23 | 74 |  |  | 8.12d | 0d |  | Branden [50%]; Noah [50%] | 40h |  |
| 79 | 14.3 | Confirm proper operation |  | 5d | 2014-11-23 | 2014-11-25 | 27, 77, 78 |  |  | 9d | 0d |  | Branden; Dan; Noah; Rusty | 56h |  |

| ID | WBS | Task | Type | Duration | Start | Finish | Predecessors | Total slack | Free slack | Constraint | Resources | Work |
| --- | --- | --- | --- | --- | --- | --- | --- | --- | --- | --- | --- | --- |
| 80 | 15 | **Final Presentation** |  | 12d | 2014-11-25 | 2014-12-11 | 79 | 0d |  |  |  | 160h |
| 81 | 15.1 | Prepare Presentation Materials |  | 3d | 2014-11-25 | 2014-11-26 |  | 8.88d | 0d |  | Branden; Dan; Noah; Rusty | 96h |
| 82 | 15.2 | Full Group Practice |  | 2d | 2014-11-27 | 2014-11-28 | 83 | 8.88d |  |  | Branden; Dan; Noah; Rusty | 64h |
| 83 | 15.3 | Complete Presentation |  | 2d | 2014-11-26 | 2014-11-27 | 81 | 8.88d | 0d |  |  |  |
| 84 | 15.4 | Give presentation | milestone | 0d | 2014-12-11 | 2014-12-11 |  | 0d |  | start no earlier than 2014-12-11 |  |  |
